# Shyne

Schedule from MS Project, 2018-01-01 to 2018-06-14, costs in €.

## Calendars

- Standard: Mon-Fri 08:00-12:00, 13:00-17:00; Sat-Sun off.

## Resources

| Resource | Rate |
| --- | --- |
| Marketing Specialist | 30 |
| Electrical Designer | 50 |
| Software Engineer | 50 |
| Security Engineer | 50 |
| Programmer A | 40 |
| Programmer B | 40 |
| Plant Engineer | 50 |
| Tester | 40 |

## Schedule

| ID | WBS | Task | Type | Duration | Start | Finish | Predecessors | Total slack | Free slack | Resources | Work | Cost | Relative Start (Text1) | Relative Finish (Text2) (Text2) | Number & Name |
| --- | --- | --- | --- | --- | --- | --- | --- | --- | --- | --- | --- | --- | --- | --- | --- |
| 1 | 1 | **Shyne** |  | 119d | 2018-01-01 | 2018-06-14 |  | 0d |  |  | 828h | 39,270 | Day 1 | Day 165 | #1 Shyne |
| 2 | 1.1 | Kickoff Meeting | milestone | 0d | 2018-01-01 | 2018-01-01 |  | 0d |  |  |  |  | Day 1 | Day 1 | #2 Kickoff Meeting |
| 3 | 1.2 | **Market Analysis** |  | 20d | 2018-01-01 | 2018-01-26 | 2 | 0d |  |  | 76h | 3,100 | Day 1 | Day 26 | #3 Market Analysis |
| 4 | 1.2.1 | Determine Necessary Device Classes |  | 3d | 2018-01-01 | 2018-01-03 |  | 0d |  | Electrical Designer [20%]; Software Engineer [20%] | 9.6h | 480 | Day 1 | Day 3 | #4 Determine Necessary Device Classes |
| 5 | 1.2.2 | Identify What Devices the Market Offers |  | 1w | 2018-01-04 | 2018-01-10 | 4 | 3d | 0d | Marketing Specialist [50%] | 20h | 600 | Day 4 | Day 10 | #5 Identify What Devices the Market Offers |
| 6 | 1.2.3 | Choose Better Suited Devices |  | 2d | 2018-01-11 | 2018-01-12 | 5 | 3d | 0d | Electrical Designer [20%]; Software Engineer [20%] | 6.4h | 320 | Day 11 | Day 12 | #6 Choose Better Suited Devices |
| 7 | 1.2.4 | Desired UX Analysis |  | 4w | 2018-01-01 | 2018-01-26 |  | 58d | 23d | Marketing Specialist [25%] | 40h | 1,200 | Day 1 | Day 26 | #7 Desired UX Analysis |
| 8 | 1.2.5 | Expert Consulting |  | 1w | 2018-01-01 | 2018-01-05 |  | 8d |  |  |  | 500 | Day 1 | Day 5 | #8 Expert Consulting |
| 9 | 1.3 | **Architecture Design** |  | 40d | 2018-01-04 | 2018-02-28 |  | 0d |  |  | 104h | 5,600 | Day 4 | Day 59 | #9 Architecture Design |
| 10 | 1.3.1 | General Wiring Drawings |  | 1w | 2018-01-15 | 2018-01-19 | 6 | 49d | 0d | Electrical Designer [25%] | 10h | 500 | Day 15 | Day 19 | #10 General Wiring Drawings |
| 11 | 1.3.2 | Detailed Wiring Drawings |  | 3w | 2018-01-22 | 2018-02-09 | 10 | 49d | 0d | Electrical Designer [25%] | 30h | 1,500 | Day 22 | Day 40 | #11 Detailed Wiring Drawings |
| 12 | 1.3.3 | Privacy Policy |  | 1w | 2018-01-04 | 2018-01-10 | 4 | 5d |  |  |  | 400 | Day 4 | Day 10 | #12 Privacy Policy |
| 13 | 1.3.4 | Database Design |  | 2w | 2018-01-04 | 2018-01-17 | 4 | 0d |  | Software Engineer [20%] | 16h | 800 | Day 4 | Day 17 | #13 Database Design |
| 14 | 1.3.5 | Software Design |  | 6w | 2018-01-18 | 2018-02-28 | 13, 6, 12, 8 | 0d |  | Software Engineer [20%] | 48h | 2,400 | Day 18 | Day 59 | #14 Software Design |
| 15 | 1.4 | **Software Production** |  | 91d | 2018-01-18 | 2018-05-24 |  | 15d |  |  | 586h | 23,800 | Day 18 | Day 144 | #15 Software Production |
| 16 | 1.4.1 | Database |  | 1w | 2018-01-18 | 2018-01-24 | 13 | 25d |  | Programmer A [25%] | 10h | 400 | Day 18 | Day 24 | #16 Database |
| 17 | 1.4.2 | Web User Interface |  | 1w | 2018-03-01 | 2018-03-07 | 7, 14 | 35d |  | Programmer B [50%] | 20h | 800 | Day 60 | Day 66 | #17 Web User Interface |
| 18 | 1.4.3 | Controller Logic |  | 8w | 2018-03-01 | 2018-04-25 | 16, 14 | 0d |  | Programmer A [50%]; Programmer B [50%] | 320h | 12,800 | Day 60 | Day 115 | #18 Controller Logic |
| 19 | 1.4.4 | Main Server Logic Programming |  | 2w | 2018-04-26 | 2018-05-09 | 17, 18, 16 | 0d |  | Programmer B [30%] | 24h | 960 | Day 116 | Day 129 | #19 Main Server Logic Programming |
| 20 | 1.4.5 | Testing |  | 10w | 2018-03-02 | 2018-05-10 | 14, 19FF+1d | 0d |  | Programmer A [40%] | 160h | 6,400 | Day 61 | Day 130 | #20 Testing |
| 21 | 1.4.6 | Software Ready | milestone | 0d | 2018-05-10 | 2018-05-10 | 20 | 0d |  |  |  |  | Day 130 | Day 130 | #21 Software Ready |
| 22 | 1.4.7 | Integration Testing |  | 2w | 2018-05-11 | 2018-05-24 | 21 | 0d |  | Programmer B [20%] | 16h | 640 | Day 131 | Day 144 | #22 Integration Testing |
| 23 | 1.4.8 | IT Security |  | 3w | 2018-04-27 | 2018-05-17 | 19SS+1d | 20d |  | Security Engineer [30%] | 36h | 1,800 | Day 117 | Day 137 | #23 IT Security |
| 24 | 1.5 | **Procurement** |  | 25d | 2018-02-12 | 2018-03-16 | 11 | 49d |  |  |  | 3,950 | Day 43 | Day 75 | #24 Procurement |
| 25 | 1.5.1 | Lamps |  | 5w | 2018-02-12 | 2018-03-16 |  | 49d | 0d |  |  | 3,000 | Day 43 | Day 75 | #25 Lamps |
| 26 | 1.5.2 | Light Sensors |  | 5w | 2018-02-12 | 2018-03-16 |  | 49d | 0d |  |  | 400 | Day 43 | Day 75 | #26 Light Sensors |
| 27 | 1.5.3 | Cameras |  | 2w | 2018-02-12 | 2018-02-23 |  | 64d | 15d |  |  | 400 | Day 43 | Day 54 | #27 Cameras |
| 28 | 1.5.4 | Wiring |  | 1d | 2018-02-12 | 2018-02-12 |  | 68d | 0d |  |  | 150 | Day 43 | Day 43 | #28 Wiring |

Notes:
- 4: Brainstorming per trovare quale tipologia di dispositivi si rendono necessari per raggiungere il goal di progetto. / Esempio: lampadine power-over-ethernet, sensori di luminosità, telecamere
- 5: Ricerca di mercato per trovare prodotti in vendita che soddisfino le necessità identificate nei predecessori.
- 6: Confronto e analisi delle interfacce, caratteristiche ed API dei dispositivi sul mercato per decidere quelli più adatti per il sistema.
- 7: Ricerca di potenziali futuri clienti per una realizzazione del progetto per identificare di che tipo di controllo il cliente avrà bisogno. / Esempio: Spegnimento completo delle luci non necessarie o una luminosità minima durante le ore lavorative => dall'interfaccia deve poter essere configurata la luminosità di una lampadina "spenta", magari anche in accordo a diverse tempistiche e festività.
- 8: Consulto di esperti della vista per studiare l'ottima illuminazione al fine di non stressare la vista e favorire la produttività.
- 10: Idea generica di come strutturare l'impianto. / Esempio: uno switch per stanza, per piano, mix a seconda delle dimensione...
- 11: Dettagli del posizionamento di cavi su muri, pavimenti e controsoffitto, prevedere prese ethernet aggiuntive per collegamento di dispositivi aggiunti alla rete LAN.
- 12: Siccome delle telecamere sono utilizzate occorre tenere anche conto della privacy dei dipendenti esplicitando come le immagini vengono trattate e salvate.
- 13: Struttura del database sulla base della tipologia di dispositivi che saranno utilizzati. Supporto per mappe delle stanze per posizionamento preciso delle lampadine e telecamere, necessari alla parte di AI per controllare efficientemente le luci.
- 20: Unit testing, back-end testing, integration testing
- 23: Sulla base di quanto stabilito dalla privacy policy occorre assicurare che i pochi minuti di immagini salvati siano criptati e accessibili solo dal sistema.
- 24: Il server assumiamo di riutilizzare un vecchio server non più utile per progetti reali, ma sufficiente per un prototipo di poche stanze per 2 settimane. / Stessa cosa per switch di rete.
- 25: 30 lampade a circa 100€ l'una
- 26: 20 sensori a 20€ l'uno circa
- 27: 2 telecamere termiche via IP a 200€ l'una
- 28: Assumiamo di avere a disposizione in magazzino cavi e prese ethernet sufficienti, ma occorre comunque fare un ordine per rimpiazzare le scorte.

| ID | WBS | Task | Type | Duration | Start | Finish | Predecessors | Total slack | Free slack | Resources | Work | Cost | Relative Start (Text1) | Relative Finish (Text2) (Text2) | Number & Name |
| --- | --- | --- | --- | --- | --- | --- | --- | --- | --- | --- | --- | --- | --- | --- | --- |
| 29 | 1.6 | **Installation** |  | 77d | 2018-02-12 | 2018-05-29 |  | 0d |  |  | 46h | 2,140 | Day 43 | Day 149 | #29 Installation |
| 30 | 1.6.1 | Server |  | 1d | 2018-02-12 | 2018-02-12 | 11 | 73d | 24d | Plant Engineer [50%] | 4h | 200 | Day 43 | Day 43 | #30 Server |
| 31 | 1.6.2 | Software Deployment |  | 2d | 2018-05-25 | 2018-05-28 | 30, 22 | 0d |  | Programmer A | 16h | 640 | Day 145 | Day 148 | #31 Software Deployment |
| 32 | 1.6.3 | Ethernet Wiring |  | 1w | 2018-02-13 | 2018-02-19 | 11, 28 | 68d | 19d | Plant Engineer [50%] | 20h | 1,000 | Day 44 | Day 50 | #32 Ethernet Wiring |
| 33 | 1.6.4 | Lamps, Sensors & Server Connection |  | 2d | 2018-03-19 | 2018-03-20 | 32, 30, 25, 26, 27 | 49d | 0d | Plant Engineer [20%] | 3.2h | 160 | Day 78 | Day 79 | #33 Lamps, Sensors & Server Connection |
| 34 | 1.6.5 | Hardware Ready | milestone | 0d | 2018-03-20 | 2018-03-20 | 33 | 49d | 0d |  |  |  | Day 79 | Day 79 | #34 Hardware Ready |
| 35 | 1.6.6 | Room Mapping in Database |  | 1d | 2018-05-29 | 2018-05-29 | 31, 34 | 0d |  | Plant Engineer [35%] | 2.8h | 140 | Day 149 | Day 149 | #35 Room Mapping in Database |
| 36 | 1.7 | **Prototype Testing** |  | 62d | 2018-03-21 | 2018-06-14 |  | 0d |  |  | 16h | 680 | Day 80 | Day 165 | #36 Prototype Testing |
| 37 | 1.7.1 | Live Testing |  | 1d | 2018-05-30 | 2018-05-30 | 35 | 0d |  | Programmer B [50%] | 4h | 160 | Day 150 | Day 150 | #37 Live Testing |
| 38 | 1.7.2 | Sensors Connection |  | 1d | 2018-03-21 | 2018-03-21 | 34 | 50d |  | Tester [50%] | 4h | 160 | Day 80 | Day 80 | #38 Sensors Connection |
| 39 | 1.7.3 | Server Logic Startup | milestone | 0d | 2018-05-30 | 2018-05-30 | 37, 38 | 0d |  |  |  |  | Day 150 | Day 150 | #39 Server Logic Startup |
| 40 | 1.7.4 | Real World Testing |  | 2w | 2018-05-31 | 2018-06-13 | 39 | 0d |  |  |  |  | Day 151 | Day 164 | #40 Real World Testing |
| 41 | 1.7.5 | Configuration Adjustment |  | 2w | 2018-06-01 | 2018-06-14 | 40SS+1d | 0d |  | Software Engineer [5%]; Tester [5%] | 8h | 360 | Day 152 | Day 165 | #41 Configuration Adjustment |
| 42 | 1.8 | Final Acceptance | milestone | 0d | 2018-06-14 | 2018-06-14 | 41, 40 | 0d |  |  |  |  | Day 165 | Day 165 | #42 Final Acceptance |

Notes:
- 30: Installazione del server fisico.
- 35: I dispositivi rilevati automaticamente vengono oragnizzati nelle stanze in modo da accoppiare le lampadine con le corrispondenti videocamere, in modo che il sistema possa rilevare la posizione delle persone rispetto alle lampadine.
- 37: System e install testing: stessi test di prima ma effettuati sul server usando ancora sensori virtuali.
- 40: Acceptance testing.
